# Bioline

Schedule from MS Project, 2010-09-13 to 2011-11-04, 10 hours a day.
CSC

## Calendars

- Padrão: Mon-Fri 09:00-12:00, 13:00-18:00; Sat-Sun off.

## Resources

| Resource |
| --- |
| Silvio Roberto Costa |
| Marcelo de Campos |
| Thiago |
| Lucivânia |
| Leonar |
| Eduardo |
| Renata |
| Igor/Alexandre |
| Alexandre/José Alberto |

## Schedule

| ID | WBS | Task | Duration | Start | Finish | Predecessors | Total slack | Constraint | Resources | Work |
| --- | --- | --- | --- | --- | --- | --- | --- | --- | --- | --- |
| 1 | 1 | **Projeto Bioline** | 239.6d? | 2010-09-13 | 2011-11-04 |  | 0d |  |  | 4372h |
| 2 | 1.1 | **Análise** | 44.6d? | 2010-09-13 | 2010-11-29 |  | 0d |  | Silvio Roberto Costa; Marcelo de Campos | 1162h |
| 3 | 1.1.1 | **Levantamento de Requisitos** | 23d | 2010-10-20 | 2010-11-29 |  | 0d |  |  | 270h |
| 4 | 1.1.1.1 | **Entrevistas** | 23d | 2010-10-20 | 2010-11-29 |  | 0d |  |  | 270h |
| 5 | 1.1.1.1.1 | **Fase I** | 15d | 2010-10-20 | 2010-11-15 |  | 0d |  |  | 190h |
| 6 | 1.1.1.1.1.1 | Contabilidade | 2d | 2010-10-20 | 2010-10-22 |  | 0d | start no earlier than 2010-10-20 | Thiago | 20h |
| 7 | 1.1.1.1.1.2 | Patrimônio | 2d | 2010-10-22 | 2010-10-26 | 6 | 0d |  | Thiago | 20h |
| 8 | 1.1.1.1.1.3 | Financeiro | 3d | 2010-10-27 | 2010-11-01 | 7 | 0d |  | Lucivânia | 30h |
| 9 | 1.1.1.1.1.4 | Faturamento | 2d | 2010-10-22 | 2010-10-26 | 6 | 3d |  | Leonar | 20h |
| 10 | 1.1.1.1.1.5 | Comercial | 5d | 2010-11-01 | 2010-11-09 | 9, 8 | 0d |  | Eduardo | 50h |
| 11 | 1.1.1.1.1.6 | Comércio Exterior | 2d | 2010-11-10 | 2010-11-12 | 10 | 9d |  | Renata | 20h |
| 12 | 1.1.1.1.1.7 | Estoque | 3d | 2010-11-10 | 2010-11-15 | 10 | 0d |  | Igor/Alexandre | 30h |
| 13 | 1.1.1.1.2 | **Fase II** | 8d | 2010-11-15 | 2010-11-29 |  | 0d |  |  | 80h |
| 14 | 1.1.1.1.2.1 | Produção | 3d | 2010-11-15 | 2010-11-19 | 12 | 0d |  | Alexandre/José Alberto | 30h |
| 15 | 1.1.1.1.2.2 | Licitações | 3d | 2010-11-19 | 2010-11-25 | 14 | 0d |  | Eduardo | 30h |
| 16 | 1.1.1.1.2.3 | Suprimentos | 2d | 2010-11-25 | 2010-11-29 | 15 | 0d |  | Igor/Alexandre | 20h |
| 17 | 1.1.2 | Revisão Funcional | 6d | 2010-09-13 | 2010-09-22 |  | 38.6d |  |  |  |
| 18 | 1.1.3 | Arquitetura da Solução | 6d | 2010-09-13 | 2010-09-22 |  | 38.6d |  |  |  |
| 19 | 1.1.4 | Aprovação | 1d? | 2010-09-13 | 2010-09-14 |  | 43.6d |  |  |  |
| 20 | 1.2 | **Desenvolvimento** | 195d? | 2010-11-29 | 2011-11-04 | 2 | 0d |  |  | 3210h |
| 21 | 1.2.1 | **Primeira Fase** | 156d? | 2010-11-29 | 2011-08-29 |  | 0d |  |  | 2370h |
| 22 | 1.2.1.1 | **Contabilidade** | 30d? | 2010-11-29 | 2011-01-20 |  | 0d |  |  | 300h |
| 23 | 1.2.1.1.1 | **Gestão Contábil** | 12d? | 2010-11-29 | 2010-12-20 |  | 0d |  |  | 120h |
| 24 | 1.2.1.1.1.1 | Balanço | 3d? | 2010-11-29 | 2010-12-03 | 2 | 0d |  | Marcelo de Campos | 30h |
| 25 | 1.2.1.1.1.2 | Razão | 3d? | 2010-12-03 | 2010-12-09 | 24 | 0d |  | Marcelo de Campos | 30h |
| 26 | 1.2.1.1.1.3 | Diário | 3d? | 2010-12-09 | 2010-12-14 | 25 | 0d |  | Marcelo de Campos | 30h |
| 27 | 1.2.1.1.1.4 | Balancete | 3d? | 2010-12-15 | 2010-12-20 | 26 | 0d |  | Marcelo de Campos | 30h |

| ID | WBS | Task | Duration | Start | Finish | Predecessors | Total slack | Free slack | Resources | Work |
| --- | --- | --- | --- | --- | --- | --- | --- | --- | --- | --- |
| 28 | 1.2.1.1.2 | **Livros fiscais** | 18d? | 2010-12-20 | 2011-01-20 |  | 0d |  |  | 180h |
| 29 | 1.2.1.1.2.1 | Escrituração fiscal | 3d? | 2010-12-20 | 2010-12-24 | 27 | 0d |  | Marcelo de Campos | 30h |
| 30 | 1.2.1.1.2.2 | Registro de entradas (compras) e saídas (faturamento) | 3d? | 2010-12-24 | 2010-12-30 | 29 | 0d |  | Marcelo de Campos | 30h |
| 31 | 1.2.1.1.2.3 | Movimentação de estoque (controle de produção e estoque) | 3d? | 2010-12-30 | 2011-01-04 | 30 | 0d |  | Marcelo de Campos | 30h |
| 32 | 1.2.1.1.2.4 | Registro de inventário | 3d? | 2011-01-05 | 2011-01-10 | 31 | 0d |  | Marcelo de Campos | 30h |
| 33 | 1.2.1.1.2.5 | Apuração de ICMS e IPI | 3d? | 2011-01-10 | 2011-01-14 | 32 | 0d |  | Marcelo de Campos | 30h |
| 34 | 1.2.1.1.2.6 | Operações com retenção de ICMS | 3d? | 2011-01-14 | 2011-01-20 | 33 | 0d |  | Marcelo de Campos | 30h |
| 35 | 1.2.1.2 | **Gestão de patrimônio** | 15d? | 2011-01-20 | 2011-02-15 |  | 0d |  |  | 150h |
| 36 | 1.2.1.2.1 | Compras / Ativo fixo | 3d? | 2011-01-20 | 2011-01-25 | 34 | 0d |  | Silvio Roberto Costa | 30h |
| 37 | 1.2.1.2.2 | Bens , baixas, aplicações e inventário | 3d? | 2011-01-26 | 2011-01-31 | 36 | 0d |  | Silvio Roberto Costa | 30h |
| 38 | 1.2.1.2.3 | Depreciação e correção monetária | 3d? | 2011-01-31 | 2011-02-04 | 37 | 0d |  | Silvio Roberto Costa | 30h |
| 39 | 1.2.1.2.4 | Posição valorizada dos bens | 3d? | 2011-02-04 | 2011-02-10 | 38 | 0d |  | Silvio Roberto Costa | 30h |
| 40 | 1.2.1.2.5 | Razão | 3d? | 2011-02-10 | 2011-02-15 | 39 | 0d |  | Silvio Roberto Costa | 30h |
| 41 | 1.2.1.3 | **FINANCEIRO** | 48d? | 2011-02-16 | 2011-05-10 |  | 0d |  |  | 660h |
| 42 | 1.2.1.3.1 | **Gestão de contas a pagar** | 9d? | 2011-02-16 | 2011-03-03 |  | 0d |  |  | 90h |
| 43 | 1.2.1.3.1.1 | Gerenciamento de custos fixos e variáveis | 3d? | 2011-02-16 | 2011-02-21 | 40 | 0d |  | Silvio Roberto Costa | 30h |
| 44 | 1.2.1.3.1.2 | Workflow de aprovação | 3d? | 2011-02-21 | 2011-02-25 | 43 | 0d |  | Silvio Roberto Costa | 30h |
| 45 | 1.2.1.3.1.3 | Contabilização e tratamento de impostos | 3d? | 2011-02-25 | 2011-03-03 | 44 | 0d |  | Silvio Roberto Costa | 30h |
| 46 | 1.2.1.3.2 | **Tesouraria** | 6d? | 2011-03-03 | 2011-03-14 |  | 48d |  |  | 60h |
| 47 | 1.2.1.3.2.1 | Fluxo de caixa | 3d? | 2011-03-03 | 2011-03-08 | 45 | 48d | 0d | Marcelo de Campos | 30h |
| 48 | 1.2.1.3.2.2 | Pagamentos | 3d? | 2011-03-09 | 2011-03-14 | 47 | 48d | 0d | Marcelo de Campos | 30h |
| 49 | 1.2.1.3.3 | **Gestão de caixa e bancos** | 9d? | 2011-03-14 | 2011-03-29 |  | 48d |  |  | 90h |
| 50 | 1.2.1.3.3.1 | Conciliação bancária | 3d? | 2011-03-14 | 2011-03-18 | 48 | 48d | 0d | Marcelo de Campos | 30h |
| 51 | 1.2.1.3.3.2 | Empréstimos e aplicações | 3d? | 2011-03-18 | 2011-03-24 | 50 | 48d | 0d | Marcelo de Campos | 30h |
| 52 | 1.2.1.3.3.3 | Transferência entre contas correntes | 3d? | 2011-03-24 | 2011-03-29 | 51 | 48d | 0d | Marcelo de Campos | 30h |

| ID | WBS | Task | Duration | Start | Finish | Predecessors | Total slack | Free slack | Resources | Work |
| --- | --- | --- | --- | --- | --- | --- | --- | --- | --- | --- |
| 53 | 1.2.1.3.4 | **Faturamento** | 18d? | 2011-03-30 | 2011-04-29 |  | 48d |  |  | 180h |
| 54 | 1.2.1.3.4.1 | Detalhamento dos produtos em nota fiscal (Identificação Lotes) | 3d? | 2011-03-30 | 2011-04-04 | 52 | 48d | 0d | Marcelo de Campos | 30h |
| 55 | 1.2.1.3.4.2 | Emissão NF-e | 3d? | 2011-04-04 | 2011-04-08 | 54 | 48d | 0d | Marcelo de Campos | 30h |
| 56 | 1.2.1.3.4.3 | Emissão de RPS e conversão em NF-e | 3d? | 2011-04-08 | 2011-04-14 | 55 | 48d | 0d | Marcelo de Campos | 30h |
| 57 | 1.2.1.3.4.4 | Controle | 3d? | 2011-04-14 | 2011-04-19 | 56 | 48d | 0d | Marcelo de Campos | 30h |
| 58 | 1.2.1.3.4.5 | Transmissão, processamento e acompanhamento do status e condições de erros; | 3d? | 2011-04-20 | 2011-04-25 | 57 | 48d | 0d | Marcelo de Campos | 30h |
| 59 | 1.2.1.3.4.6 | Recepção, armazenamento e impressão do DANFE. | 3d? | 2011-04-25 | 2011-04-29 | 58 | 48d | 0d | Marcelo de Campos | 30h |
| 60 | 1.2.1.3.5 | **Gestão de Arrecadação (contas a receber)** | 18d? | 2011-03-03 | 2011-04-04 |  | 0d |  |  | 180h |
| 61 | 1.2.1.3.5.1 | Títulos e contas a receber | 3d? | 2011-03-03 | 2011-03-08 | 45 | 0d |  | Silvio Roberto Costa | 30h |
| 62 | 1.2.1.3.5.2 | Processo de baixa dos títulos em aberto | 3d? | 2011-03-09 | 2011-03-14 | 61 | 0d |  | Silvio Roberto Costa | 30h |
| 63 | 1.2.1.3.5.3 | Recebimento dos bancos | 3d? | 2011-03-14 | 2011-03-18 | 62 | 0d |  | Silvio Roberto Costa | 30h |
| 64 | 1.2.1.3.5.4 | Recebimentos avulsos | 3d? | 2011-03-18 | 2011-03-24 | 63 | 0d |  | Silvio Roberto Costa | 30h |
| 65 | 1.2.1.3.5.5 | Cheques pré-datados e de terceiros | 3d? | 2011-03-24 | 2011-03-29 | 64 | 0d |  | Silvio Roberto Costa | 30h |
| 66 | 1.2.1.3.5.6 | Parcelamento de débitos | 3d? | 2011-03-30 | 2011-04-04 | 65 | 0d |  | Silvio Roberto Costa | 30h |
| 67 | 1.2.1.3.6 | **Gestão de Cobrança** | 6d? | 2011-04-29 | 2011-05-10 |  | 48d |  |  | 60h |
| 68 | 1.2.1.3.6.1 | Políticas de cobrança | 3d? | 2011-04-29 | 2011-05-05 | 59 | 48d | 0d | Marcelo de Campos | 30h |
| 69 | 1.2.1.3.6.2 | Títulos em protesto | 3d? | 2011-05-05 | 2011-05-10 | 68 | 48d | 0d | Marcelo de Campos | 30h |
| 70 | 1.2.1.4 | **Estoques** | 36d? | 2011-04-04 | 2011-06-06 |  | 0d |  |  | 390h |
| 71 | 1.2.1.4.1 | **Gestão de estoque (Insumos e produtos acabados)** | 15d? | 2011-05-11 | 2011-06-06 |  | 48d |  |  | 150h |
| 72 | 1.2.1.4.1.1 | Administração do estoque | 3d? | 2011-05-11 | 2011-05-16 | 69 | 48d | 0d | Marcelo de Campos | 30h |
| 73 | 1.2.1.4.1.2 | Controle de saldos | 3d? | 2011-05-16 | 2011-05-20 | 72 | 48d | 0d | Marcelo de Campos | 30h |
| 74 | 1.2.1.4.1.3 | Movimentação | 3d? | 2011-05-20 | 2011-05-26 | 73 | 48d | 0d | Marcelo de Campos | 30h |
| 75 | 1.2.1.4.1.4 | Reservas de quantidade de insumos e produtos acabados (lote mínimo por produto) | 3d? | 2011-05-26 | 2011-05-31 | 74 | 48d | 0d | Marcelo de Campos | 30h |
| 76 | 1.2.1.4.1.5 | localização física | 3d? | 2011-06-01 | 2011-06-06 | 75 | 48d |  | Marcelo de Campos | 30h |

| ID | WBS | Task | Duration | Start | Finish | Predecessors | Total slack | Constraint | Resources | Work |
| --- | --- | --- | --- | --- | --- | --- | --- | --- | --- | --- |
| 77 | 1.2.1.4.2 | **Gestão de contratos** | 12d? | 2011-04-04 | 2011-04-25 |  | 0d |  |  | 120h |
| 78 | 1.2.1.4.2.1 | Prestação de serviços | 3d? | 2011-04-04 | 2011-04-08 | 66 | 0d |  | Silvio Roberto Costa | 30h |
| 79 | 1.2.1.4.2.2 | Clientes e fornecedores | 3d? | 2011-04-08 | 2011-04-14 | 78 | 0d |  | Silvio Roberto Costa | 30h |
| 80 | 1.2.1.4.2.3 | Políticas de alçada por comprador (Configuração por produto ou grupo) | 3d? | 2011-04-14 | 2011-04-19 | 79 | 0d |  | Silvio Roberto Costa | 30h |
| 81 | 1.2.1.4.2.4 | Alertas de vencimento, atraso e renovação | 3d? | 2011-04-20 | 2011-04-25 | 80 | 0d |  | Silvio Roberto Costa | 30h |
| 82 | 1.2.1.4.3 | **Gestão de compras e recebimento** | 6d? | 2011-04-25 | 2011-05-05 |  | 0d |  |  | 60h |
| 83 | 1.2.1.4.3.1 | Predição de compras de insumos | 3d? | 2011-04-25 | 2011-04-29 | 81 | 0d |  | Silvio Roberto Costa | 30h |
| 84 | 1.2.1.4.3.2 | Controle de pedidos (Resumo de preços, prazo de entrega, condições de pagamento, impostos praticados por cada fornecedor – Poder de decisão) | 3d? | 2011-04-29 | 2011-05-05 | 83 | 0d |  | Silvio Roberto Costa | 30h |
| 85 | 1.2.1.4.4 | **Gestão de OS (Ordem de serviço)** | 6d? | 2011-05-05 | 2011-05-16 |  | 0d |  |  | 60h |
| 86 | 1.2.1.4.4.1 | Assistência técnica | 3d? | 2011-05-05 | 2011-05-10 | 84 | 0d |  | Silvio Roberto Costa | 30h |
| 87 | 1.2.1.4.4.2 | Faturamento de serviços | 3d? | 2011-05-11 | 2011-05-16 | 86 | 60d |  | Silvio Roberto Costa | 30h |
| 88 | 1.2.1.5 | **CRM** | 36d? | 2011-05-11 | 2011-07-12 |  | 0d |  |  | 420h |
| 89 | 1.2.1.5.1 | **Gestão de contratos** | 6d? | 2011-05-11 | 2011-05-20 |  | 0d |  |  | 60h |
| 90 | 1.2.1.5.1.1 | Administração de atividades | 3d? | 2011-05-11 | 2011-05-16 | 86 | 0d | start no earlier than 2010-10-01 | Silvio Roberto Costa | 30h |
| 91 | 1.2.1.5.1.2 | Administração de qualidade | 3d? | 2011-05-16 | 2011-05-20 | 90 | 0d |  | Silvio Roberto Costa | 30h |
| 92 | 1.2.1.5.2 | **Gestão de oportunidades** | 12d? | 2011-05-20 | 2011-06-10 |  | 0d |  |  | 120h |
| 93 | 1.2.1.5.2.1 | Acompanhamento de orçamentos | 3d? | 2011-05-20 | 2011-05-26 | 91 | 0d |  | Silvio Roberto Costa | 30h |
| 94 | 1.2.1.5.2.2 | Fidelização (pontuação) e indicadores de mídias que geram oportunidade de vendas | 3d? | 2011-05-26 | 2011-05-31 | 93 | 0d |  | Silvio Roberto Costa | 30h |
| 95 | 1.2.1.5.2.3 | Definição das carteiras de clientes | 3d? | 2011-06-01 | 2011-06-06 | 94 | 0d |  | Silvio Roberto Costa | 30h |
| 96 | 1.2.1.5.2.4 | Agenda de compromissos | 3d? | 2011-06-06 | 2011-06-10 | 95 | 0d |  | Silvio Roberto Costa | 30h |
| 97 | 1.2.1.5.3 | **Gestão de ocorrências** | 18d? | 2011-06-10 | 2011-07-12 |  | 0d |  |  | 180h |
| 98 | 1.2.1.5.3.1 | Compras | 3d? | 2011-06-10 | 2011-06-16 | 96 | 0d |  | Marcelo de Campos | 30h |
| 99 | 1.2.1.5.3.2 | Pagamentos | 3d? | 2011-06-16 | 2011-06-21 | 98 | 0d |  | Marcelo de Campos | 30h |
| 100 | 1.2.1.5.3.3 | Devoluções | 3d? | 2011-06-22 | 2011-06-27 | 99 | 0d |  | Marcelo de Campos | 30h |
| 101 | 1.2.1.5.3.4 | Reclamações ou elogios | 3d? | 2011-06-27 | 2011-07-01 | 100 | 0d |  | Marcelo de Campos | 30h |
| 102 | 1.2.1.5.3.5 | Agenda de visitas | 3d? | 2011-07-01 | 2011-07-07 | 101 | 0d |  | Marcelo de Campos | 30h |
| 103 | 1.2.1.5.3.6 | Pendências | 3d? | 2011-07-07 | 2011-07-12 | 102 | 0d |  | Marcelo de Campos | 30h |

| ID | WBS | Task | Duration | Start | Finish | Predecessors | Total slack | Free slack | Resources | Work |
| --- | --- | --- | --- | --- | --- | --- | --- | --- | --- | --- |
| 104 | 1.2.1.5.4 | **Gestão de desempenho** | 6d? | 2011-06-10 | 2011-06-21 |  | 21d |  |  | 60h |
| 105 | 1.2.1.5.4.1 | Unificação das informações do cliente | 3d? | 2011-06-10 | 2011-06-16 | 96 | 21d | 0d | Silvio Roberto Costa | 30h |
| 106 | 1.2.1.5.4.2 | Consolidação de informações históricas | 3d? | 2011-06-16 | 2011-06-21 | 105 | 21d | 0d | Silvio Roberto Costa | 30h |
| 107 | 1.2.1.6 | **COMERCIAL** | 39d? | 2011-06-22 | 2011-08-29 |  | 0d |  |  | 450h |
| 108 | 1.2.1.6.1 | **Gestão canais de vendas** | 12d? | 2011-07-13 | 2011-08-02 |  | 0d |  |  | 120h |
| 109 | 1.2.1.6.1.1 | Distribuidores | 3d? | 2011-07-13 | 2011-07-18 | 103 | 0d |  | Marcelo de Campos | 30h |
| 110 | 1.2.1.6.1.2 | Representantes (Pessoa jurídica – Profissional liberal) | 3d? | 2011-07-18 | 2011-07-22 | 109 | 0d |  | Marcelo de Campos | 30h |
| 111 | 1.2.1.6.1.3 | Colaboradores | 3d? | 2011-07-22 | 2011-07-28 | 110 | 0d |  | Marcelo de Campos | 30h |
| 112 | 1.2.1.6.1.4 | Políticas de alçada por vendedor | 3d? | 2011-07-28 | 2011-08-02 | 111 | 0d |  | Marcelo de Campos | 30h |
| 113 | 1.2.1.6.2 | **Marketing** | 12d? | 2011-06-22 | 2011-07-12 |  | 21d |  |  | 120h |
| 114 | 1.2.1.6.2.1 | Campanhas de marketing | 3d? | 2011-06-22 | 2011-06-27 | 106 | 21d | 0d | Silvio Roberto Costa | 30h |
| 115 | 1.2.1.6.2.2 | Promoções | 3d? | 2011-06-27 | 2011-07-01 | 114 | 21d | 0d | Silvio Roberto Costa | 30h |
| 116 | 1.2.1.6.2.3 | Pacotes ou mix de produtos | 3d? | 2011-07-01 | 2011-07-07 | 115 | 21d | 0d | Silvio Roberto Costa | 30h |
| 117 | 1.2.1.6.2.4 | Vendas casadas | 3d? | 2011-07-07 | 2011-07-12 | 116 | 21d | 0d | Silvio Roberto Costa | 30h |
| 118 | 1.2.1.6.3 | **Gestão de vendas** | 15d? | 2011-08-03 | 2011-08-29 |  | 0d |  |  | 150h |
| 119 | 1.2.1.6.3.1 | Gerenciamento de pedidos | 3d? | 2011-08-03 | 2011-08-08 | 112 | 0d |  | Marcelo de Campos | 30h |
| 120 | 1.2.1.6.3.2 | Força de vendas (metas e prazos) | 3d? | 2011-08-08 | 2011-08-12 | 119 | 0d |  | Marcelo de Campos | 30h |
| 121 | 1.2.1.6.3.3 | Pendências de emissão de proposta | 3d? | 2011-08-12 | 2011-08-18 | 120 | 0d |  | Marcelo de Campos | 30h |
| 122 | 1.2.1.6.3.4 | Agendamento de visitas | 3d? | 2011-08-18 | 2011-08-23 | 121 | 0d |  | Marcelo de Campos | 30h |
| 123 | 1.2.1.6.3.5 | Assinatura de contratos | 3d? | 2011-08-24 | 2011-08-29 | 122 | 0d |  | Marcelo de Campos | 30h |
| 124 | 1.2.1.6.4 | **Gestão de licitações** | 6d? | 2011-07-13 | 2011-07-22 |  | 21d |  |  | 60h |
| 125 | 1.2.1.6.4.1 | Licitações púbicas | 3d? | 2011-07-13 | 2011-07-18 | 117 | 21d | 0d | Silvio Roberto Costa | 30h |
| 126 | 1.2.1.6.4.2 | Previsões e empenho | 3d? | 2011-07-18 | 2011-07-22 | 125 | 21d |  | Silvio Roberto Costa | 30h |
| 127 | 1.2.2 | **Segunda Fase** | 39d? | 2011-08-29 | 2011-11-04 | 21 | 0d |  |  | 840h |
| 128 | 1.2.2.1 | **PRODUÇÃO** | 39d? | 2011-08-29 | 2011-11-04 |  | 0d |  |  | 630h |
| 129 | 1.2.2.1.1 | **Gestão de entradas de Insumos** | 6d? | 2011-08-29 | 2011-09-08 |  | 15d |  |  | 60h |
| 130 | 1.2.2.1.1.1 | Estruturação de insumos utilizados na fabricação de cada produto (especificação técnica) | 3d? | 2011-08-29 | 2011-09-02 | 21 | 15d | 0d | Silvio Roberto Costa | 30h |
| 131 | 1.2.2.1.1.2 | Gerenciamento dos insumos recebidos | 3d? | 2011-09-02 | 2011-09-08 | 130 | 15d | 0d | Silvio Roberto Costa | 30h |

| ID | WBS | Task | Duration | Start | Finish | Predecessors | Total slack | Free slack | Resources | Work |
| --- | --- | --- | --- | --- | --- | --- | --- | --- | --- | --- |
| 132 | 1.2.2.1.2 | **Gestão de produção** | 24d? | 2011-08-29 | 2011-10-10 |  | 0d |  |  | 300h |
| 133 | 1.2.2.1.2.1 | Previsão de vendas e pedidos em carteira | 3d? | 2011-08-29 | 2011-09-02 | 21 | 0d |  | Marcelo de Campos | 30h |
| 134 | 1.2.2.1.2.2 | Planejamento e programação de produção | 3d? | 2011-09-02 | 2011-09-08 | 133 | 0d |  | Marcelo de Campos | 30h |
| 135 | 1.2.2.1.2.3 | Ordem de produção (sob encomenda ou estoque mínimo) | 3d? | 2011-09-08 | 2011-09-13 | 134 | 0d |  | Marcelo de Campos | 30h |
| 136 | 1.2.2.1.2.4 | Programação de fabricação (Visibilidade da disponibilidade de equipamentos e datas de entregas do produtos; redefinição de prioridades) | 3d? | 2011-09-14 | 2011-09-19 | 135 | 0d |  | Marcelo de Campos | 30h |
| 137 | 1.2.2.1.2.5 | **Controle de operações** | 9d? | 2011-09-08 | 2011-09-23 |  | 15d |  |  | 90h |
| 138 | 1.2.2.1.2.5.1 | Preparo de fios | 3d? | 2011-09-08 | 2011-09-13 | 131 | 15d | 0d | Silvio Roberto Costa | 30h |
| 139 | 1.2.2.1.2.5.2 | Encastoamento | 3d? | 2011-09-14 | 2011-09-19 | 138 | 15d | 0d | Silvio Roberto Costa | 30h |
| 140 | 1.2.2.1.2.5.3 | Embalagem | 3d? | 2011-09-19 | 2011-09-23 | 139 | 15d | 0d | Silvio Roberto Costa | 30h |
| 141 | 1.2.2.1.2.6 | Controle de perdas (matéria-prima e produtos acabados) | 3d? | 2011-09-23 | 2011-09-29 | 140 | 15d | 0d | Silvio Roberto Costa | 30h |
| 142 | 1.2.2.1.2.7 | Esterilização | 3d? | 2011-09-29 | 2011-10-04 | 141 | 15d | 0d | Silvio Roberto Costa | 30h |
| 143 | 1.2.2.1.2.8 | Automação das cartas de controle (CEP) | 3d? | 2011-10-05 | 2011-10-10 | 142 | 15d |  | Silvio Roberto Costa | 30h |
| 144 | 1.2.2.1.2.9 | Produtividade operacional e eficiência da mão-de-obra | 3d? | 2011-08-29 | 2011-09-02 |  | 36d |  |  |  |
| 145 | 1.2.2.1.3 | **Gestão da qualidade** | 6d? | 2011-09-19 | 2011-09-29 |  | 0d |  |  | 60h |
| 146 | 1.2.2.1.3.1 | Acompanhamento e controle das operações | 3d? | 2011-09-19 | 2011-09-23 | 136 | 0d |  | Marcelo de Campos | 30h |
| 147 | 1.2.2.1.3.2 | Teste de conformidade do produto | 3d? | 2011-09-23 | 2011-09-29 | 146 | 0d |  | Marcelo de Campos | 30h |
| 148 | 1.2.2.1.4 | **Gestão de saídas de produtos acabados** | 21d? | 2011-09-29 | 2011-11-04 |  | 0d |  |  | 210h |
| 149 | 1.2.2.1.4.1 | Controle de distribuição de produtos acabados (FIFO) | 3d? | 2011-09-29 | 2011-10-04 | 147 | 0d |  | Marcelo de Campos | 30h |
| 150 | 1.2.2.1.4.2 | Movimentação | 3d? | 2011-10-05 | 2011-10-10 | 149 | 0d |  | Marcelo de Campos | 30h |
| 151 | 1.2.2.1.4.3 | Reservas de quantidade de insumos | 3d? | 2011-10-10 | 2011-10-14 | 150 | 0d |  | Marcelo de Campos | 30h |
| 152 | 1.2.2.1.4.4 | localização física | 3d? | 2011-10-14 | 2011-10-20 | 151 | 0d |  | Marcelo de Campos | 30h |
| 153 | 1.2.2.1.4.5 | Logística | 3d? | 2011-10-20 | 2011-10-25 | 152 | 0d |  | Marcelo de Campos | 30h |
| 154 | 1.2.2.1.4.6 | Distribuição | 3d? | 2011-10-26 | 2011-10-31 | 153 | 0d |  | Marcelo de Campos | 30h |
| 155 | 1.2.2.1.4.7 | Acompanhamento das entregas | 3d? | 2011-10-31 | 2011-11-04 | 154 | 0d |  | Marcelo de Campos | 30h |

| ID | WBS | Task | Duration | Start | Finish | Predecessors | Total slack | Free slack | Resources | Work |
| --- | --- | --- | --- | --- | --- | --- | --- | --- | --- | --- |
| 156 | 1.2.2.2 | **Administração** | 12d? | 2011-08-29 | 2011-09-19 |  | 27d |  |  | 210h |
| 157 | 1.2.2.2.1 | **Gestão Recursos humanos** | 6d? | 2011-08-29 | 2011-09-08 |  | 30d |  |  | 60h |
| 158 | 1.2.2.2.1.1 | Cadastro de colaboradores | 3d? | 2011-08-29 | 2011-09-02 |  | 30d | 0d | Marcelo de Campos | 30h |
| 159 | 1.2.2.2.1.2 | Integração com sistema de RH utilizado pela empresa | 3d? | 2011-09-02 | 2011-09-08 | 158 | 30d | 0d | Marcelo de Campos | 30h |
| 160 | 1.2.2.2.2 | **TI – tecnologia da informação** | 12d? | 2011-08-29 | 2011-09-19 |  | 27d |  |  | 120h |
| 161 | 1.2.2.2.2.1 | Gestão de contratos | 3d? | 2011-08-29 | 2011-09-02 | 40 | 27d | 0d | Silvio Roberto Costa | 30h |
| 162 | 1.2.2.2.2.2 | Políticas de uso de equipamentos e softwares | 3d? | 2011-09-02 | 2011-09-08 | 161 | 27d | 0d | Silvio Roberto Costa | 30h |
| 163 | 1.2.2.2.2.3 | Gestão de equipamentos | 3d? | 2011-09-08 | 2011-09-13 | 162 | 27d | 0d | Silvio Roberto Costa | 30h |
| 164 | 1.2.2.2.2.4 | Administração, suporte e segurança de redes | 3d? | 2011-09-14 | 2011-09-19 | 163 | 27d |  | Silvio Roberto Costa | 30h |
| 165 | 1.2.2.2.3 | **Serviços gerais** | 3d? | 2011-09-08 | 2011-09-13 |  | 30d |  |  | 30h |
| 166 | 1.2.2.2.3.1 | Gestão de contratos | 3d? | 2011-09-08 | 2011-09-13 | 159 | 30d |  | Marcelo de Campos | 30h |
| 167 | 1.3 | Treinamento | 10d | 2010-09-13 | 2010-09-29 |  | 229.6d |  |  |  |
| 168 | 1.4 | Documentação | 30d | 2010-09-13 | 2010-11-03 |  | 209.6d |  |  |  |
| 169 | 1.5 | Implantação | 10d | 2010-09-13 | 2010-09-29 |  | 229.6d |  |  |  |
